Schedule from MS Project, 2021-06-07 to 2022-04-15, costs in $.

## Calendars

- Стандартный: Mon-Fri 09:00-13:00, 14:00-18:00; Sat-Sun off.

## Resources

| Resource | Rate |
| --- | --- |
| PM | 15 |
| Back-end dev | 9.37 |
| Front-end dev | 8.75 |
| Business Analyst | 11.87 |
| System Analyst | 8.75 |
| DevOps | 8.75 |
| Support | 6 |
| System Architect | 31.25 |
| QA Engineer | 7 |
| Back-end dev (2) | 9.37 |
| Front-end dev (2) | 8.75 |
| QA Engineer (2) | 7 |
| Designer | 8.25 |

## Schedule

| ID | WBS | Task | Type | Duration | Start | Finish | Predecessors | Total slack | Free slack | Constraint | Resources | Work | Cost |
| --- | --- | --- | --- | --- | --- | --- | --- | --- | --- | --- | --- | --- | --- |
| 1 | 1 | **MapForYou - travel as you like** |  | 225d | 2021-06-07 | 2022-04-15 |  | 0d |  |  |  | 4810.7h | 38,216.63 |
| 2 | 1.1 | **1 этап** |  | 24d | 2021-06-07 | 2021-07-08 |  | 0d |  |  |  | 221.33h | 2,763.96 |
| 3 | 1.1.1 | **Составление документации проекта** |  | 16d | 2021-06-07 | 2021-06-28 |  | 0d |  |  |  | 133.33h | 1,844.2 |
| 4 | 1.1.1.1 | Написание устава проекта |  | 2d | 2021-06-07 | 2021-06-08 |  | 0d |  | start no earlier than 2021-06-07 | PM [60%]; Business Analyst [40%] | 16h | 219.97 |
| 5 | 1.1.1.2 | Написание плана проекта |  | 4d | 2021-06-09 | 2021-06-14 | 4 | 0d |  |  | PM [50%]; System Analyst [10%]; Business Analyst [30%]; System Architect [10%] | 29.33h | 441.95 |
| 6 | 1.1.1.3 | Составление бюджета проекта |  | 1d | 2021-06-09 | 2021-06-09 | 4 | 3d |  |  | PM [50%]; Business Analyst [50%] | 8h | 107.48 |
| 7 | 1.1.1.4 | Утверждение документации с заказчиком и спонсорами |  | 10d | 2021-06-15 | 2021-06-28 | 4, 5, 6 | 0d |  |  | PM [50%]; Business Analyst [50%] | 80h | 1,074.8 |
| 8 | 1.1.1.5 | Документация завершена | milestone | 0d | 2021-06-28 | 2021-06-28 | 7 | 0d |  |  |  |  |  |
| 9 | 1.1.2 | **Разработка прототипа и требований** |  | 8d | 2021-06-29 | 2021-07-08 |  | 0d |  |  |  | 88h | 919.76 |
| 10 | 1.1.2.1 | Составление прототипа приложения |  | 5d | 2021-06-29 | 2021-07-05 | 3 | 0d |  |  | Business Analyst [50%]; Front-end dev | 60h | 587.4 |
| 11 | 1.1.2.2 | Описание верхнеуровневых требований |  | 7d | 2021-06-30 | 2021-07-08 | 10SS+1d | 0d |  |  | Business Analyst [50%] | 28h | 332.36 |
| 12 | 1.2 | **2 этап** |  | 37d | 2021-07-09 | 2021-08-30 |  | 0d |  |  |  | 750.4h | 6,675.41 |
| 13 | 1.2.1 | **Разработка дизайна и интерфейса приложения (UI)** |  | 37d | 2021-07-09 | 2021-08-30 |  | 0d |  |  |  | 750.4h | 6,675.41 |
| 14 | 1.2.1.1 | Разработка главной (домашней) страницы |  | 25d | 2021-07-09 | 2021-08-12 | 9 | 0d |  |  | Back-end dev [35%]; Front-end dev [35%]; DevOps [10%]; Designer [20%] | 200h | 1,773.4 |
| 15 | 1.2.1.2 | Разработка страницы с картой мира |  | 27d | 2021-07-09 | 2021-08-16 | 9 | 44d | 0d |  | Back-end dev [35%]; DevOps [10%]; Front-end dev [35%]; Designer [20%] | 201.6h | 1,794.07 |
| 16 | 1.2.1.3 | Разработка страницы пользователя (профиля) |  | 18d | 2021-07-09 | 2021-08-03 | 9 | 183d |  |  | Front-end dev (2) [35%]; DevOps [10%]; Back-end dev (2) [35%]; Designer [20%] | 134.4h | 1,196.05 |
| 17 | 1.2.1.4 | Разработка страницы знакомств по общим интересам |  | 18d | 2021-07-09 | 2021-08-03 | 9 | 79d | 35d |  | Front-end dev (2) [35%]; DevOps [10%]; Back-end dev (2) [35%]; Designer [20%] | 134.4h | 1,196.05 |
| 18 | 1.2.1.5 | Разработка страницы записи маршрута |  | 10d | 2021-08-17 | 2021-08-30 | 15 | 44d | 0d |  | Back-end dev [40%]; DevOps [10%]; Front-end dev [40%]; Designer [10%] | 80h | 715.84 |
| 19 | 1.3 | **3 этап** |  | 61d | 2021-08-17 | 2021-11-09 |  | 44d |  |  |  | 793.6h | 7,167.2 |
| 20 | 1.3.1 | **Разработка функционала для пользователя** |  | 61d | 2021-08-17 | 2021-11-09 |  | 44d | 0d |  |  | 793.6h | 7,167.2 |
| 21 | 1.3.1.1 | Разработка возможности прокладывания маршрута пользователем (маркерами/не отрывая палец) |  | 16d | 2021-08-31 | 2021-09-21 | 18 | 44d | 0d |  | Back-end dev [45%]; Front-end dev [45%]; DevOps [10%] | 126.4h | 1,141.71 |
| 22 | 1.3.1.2 | Возможность навигации по маршруту |  | 16d | 2021-09-22 | 2021-10-13 | 21 | 63d |  | finish no earlier than 2021-08-24 | Back-end dev [45%]; Front-end dev [45%]; DevOps [10%] | 126.4h | 1,141.71 |
| 23 | 1.3.1.3 | Разработка возможности записи своего маршрута (скорость текущая/средняя/макс., тренировочный (обнуляемый) километраж, часы 12/24 часа, время в пути, температура, высотомер) |  | 16d | 2021-09-22 | 2021-10-13 | 21 | 59d | 0d |  | Back-end dev [45%]; Front-end dev [45%]; DevOps [10%] | 126.4h | 1,141.71 |
| 24 | 1.3.1.4 | Разработка возможности пользователю (в м/км) скрывать начало пути |  | 4d | 2021-10-14 | 2021-10-19 | 23 | 59d |  |  | Back-end dev [45%]; Front-end dev [45%]; DevOps [10%] | 31.2h | 281.93 |
| 25 | 1.3.1.5 | Разработка возможности добавления фото/видео маршрута |  | 5d | 2021-08-17 | 2021-08-23 | 15 | 100d |  |  | Front-end dev (2) [45%]; Back-end dev (2) [45%]; DevOps [10%] | 40h | 361.16 |
| 26 | 1.3.1.6 | Разработка возможности добавления отзывов и вопросов о выбранном маршруте |  | 8d | 2021-08-31 | 2021-09-09 | 15, 18 | 87d |  |  | Back-end dev [45%]; Front-end dev [45%]; DevOps [10%] | 63.2h | 570.86 |
| 27 | 1.3.1.7 | Разработка функционала для общения/знакомства с «людьми рядом» по общим интересам, знакомства в пути или во время планирования маршрута “в реальном времени” |  | 21d | 2021-09-22 | 2021-10-20 | 17, 21 | 44d | 0d |  | Back-end dev (2) [45%]; Front-end dev (2) [45%]; DevOps [10%] | 168h | 1,516.87 |
| 28 | 1.3.1.8 | Разработка возможности добавления друзей/известных личностей, возможности следить за их результатами |  | 14d | 2021-10-21 | 2021-11-09 | 27 | 44d |  |  | Back-end dev (2) [45%]; Front-end dev (2) [45%]; DevOps [10%] | 112h | 1,011.25 |

Notes:
- 1: Стоимость указана без учёта рисков. / Бюджет с рисками = 49 682$

| ID | WBS | Task | Duration | Start | Finish | Predecessors | Total slack | Constraint | Resources | Work | Cost |
| --- | --- | --- | --- | --- | --- | --- | --- | --- | --- | --- | --- |
| 29 | 1.4 | **4 этап** | 7d | 2021-11-10 | 2021-11-18 |  | 44d |  |  | 96h | 864.84 |
| 30 | 1.4.1 | **Разработка прибыльной части** | 7d | 2021-11-10 | 2021-11-18 |  | 44d |  |  | 96h | 864.84 |
| 31 | 1.4.1.1 | Разработка расположения мест для баннеров рекламодателей | 7d | 2021-11-10 | 2021-11-18 | 20 | 44d |  | Back-end dev [45%]; DevOps [10%]; Front-end dev [45%] | 56h | 505.62 |
| 32 | 1.4.1.2 | Разработка страницы с подпиской (недельной / месячной / годовой) | 5d | 2021-11-10 | 2021-11-16 | 20 | 46d |  | Back-end dev [42%]; DevOps [10%]; Front-end dev [42%]; Designer [6%] | 40h | 359.22 |
| 33 | 1.5 | **5 этап** | 200d | 2021-07-12 | 2022-04-15 |  | 0d |  |  | 2949.36h | 20,745.22 |
| 34 | 1.5.1 | **Завершение проекта и поддержка** | 200d | 2021-07-12 | 2022-04-15 |  | 0d |  |  | 2949.36h | 20,745.22 |
| 35 | 1.5.1.1 | Тестирование приложения | 139d | 2021-07-12 | 2022-01-20 | 30FF+1d, 14SS+1d | 0d | start no earlier than 2021-07-10 | QA Engineer; QA Engineer (2) | 2224h | 15,568 |
| 36 | 1.5.1.2 | Передача релиза готового приложения | 1d | 2022-01-21 | 2022-01-21 | 35 | 0d |  | PM [33%]; System Architect [33%]; System Analyst [33%] | 5.36h | 122.82 |
| 37 | 1.5.1.3 | Поддержка приложения | 60d | 2022-01-24 | 2022-04-15 | 36 | 0d |  | Support; Back-end dev (2) [25%]; Front-end dev (2) [25%] | 720h | 5,054.4 |
